# 総合力表示

Schedule from a web Gantt chart, 2024-01-22 to 2024-03-08.
Saturdays and Sundays are off

## Schedule

| ID | WBS | Task | Type | Duration | Start | Finish | Complete | Status | inPeople |
| --- | --- | --- | --- | --- | --- | --- | --- | --- | --- |
| 2 | 1 | **Dev Lock(実装〆)** | fixed end | 26d | 2024-01-22 | 2024-02-26 | 100% | done |  |
| 3 | 1.1 | **企画** |  | 25d | 2024-01-22 | 2024-02-23 | 100% | done | 李 |
| 4 | 1.1.1 | 機能概要作成 |  | 3d | 2024-01-22 | 2024-01-24 | 100% | done | 李 |
| 5 | 1.1.2 | 機能概要社内合意 |  | 1d | 2024-01-25 | 2024-01-25 | 100% | done | 李 |
| 6 | 1.1.3 | 機能概要EA合意 |  | 1d | 2024-01-26 | 2024-01-26 | 100% | done | 李 |
| 7 | 1.1.4 | 機能仕様作成 |  | 2d | 2024-01-29 | 2024-01-30 | 100% | done | 李 |
| 8 | 1.1.5 | 機能仕様読み合わせ |  | 1d | 2024-01-31 | 2024-01-31 | 100% | done | 李 |
| 9 | 1.1.6 | 仕様詳細詰め |  | 3d | 2024-01-31 | 2024-02-02 | 100% | done | 李 |
| 10 | 1.1.7 | 仕様PR化 |  | 9d | 2024-02-05 | 2024-02-15 | 100% | done | 李 |
| 11 | 1.1.8 | チームレビュー設定 |  | 1d | 2024-02-13 | 2024-02-13 | 100% | done |  |
| 12 | 1.1.9 | 文言正式化 |  | 3d | 2024-02-14 | 2024-02-16 | 100% | done |  |
| 13 | 1.1.10 | Tips設計 |  | 3d | 2024-02-13 | 2024-02-15 | 100% | done | 李 |
| 14 | 1.1.11 | Tips発注 |  | 2d | 2024-02-15 | 2024-02-16 | 100% | done | 李 |
| 15 | 1.1.12 | Tipsマスタ入力 |  | 2d | 2024-02-15 | 2024-02-16 | 100% | done | 李 |
| 16 | 1.1.13 | テスト観点レビュー |  | 1d | 2024-02-14 | 2024-02-14 | 100% | done | 李 |
| 17 | 1.1.14 | テストケースレビュー |  | 1d | 2024-02-16 | 2024-02-16 | 100% | done | 李 |
| 18 | 1.1.15 | 機能検品（チームレビュー） |  | 1d | 2024-02-16 | 2024-02-16 | 100% | done | 李 |
| 19 | 1.1.16 | dev-lockまでのバグ、修正対応 |  | 4d | 2024-02-19 | 2024-02-22 | 100% | done | 李 |
| 20 | 1.1.17 | dev-lockまでのバグ修正確認 |  | 5d | 2024-02-19 | 2024-02-23 | 100% | done | 李 |
| 21 | 1.2 | **開発** |  | 13d | 2024-02-08 | 2024-02-26 | 100% | done | 宮本 |
| 22 | 1.2.1 | 機能開発 |  | 6d | 2024-02-08 | 2024-02-15 | 100% | done | 宮本 |
| 23 | 1.2.2 | 演出対応 |  | 4d | 2024-02-16 | 2024-02-21 | 100% | done |  |
| 24 | 1.2.3 | テスト観点レビュー |  | 1d | 2024-02-14 | 2024-02-14 | 100% | done | 宮本 |
| 25 | 1.2.4 | テストケースレビュー |  | 1d | 2024-02-16 | 2024-02-16 | 100% | done | 宮本 |
| 26 | 1.2.5 | 機能検品 |  | 1d | 2024-02-16 | 2024-02-16 | 100% | done | 宮本 |

| ID | WBS | Task | Duration | Start | Finish | Complete | inPeople | Status |
| --- | --- | --- | --- | --- | --- | --- | --- | --- |
| 27 | 1.2.6 | **dev-lockまでのバグ、修正対応** | 6d | 2024-02-19 | 2024-02-26 | 100% | 宮本 | done |
| 28 | 1.2.6.1 | チケット879 演出中他機能遷移 | 6d | 2024-02-19 | 2024-02-26 | 100% |  | done |
| 29 | 1.2.6.2 | チケット881 デッキ表示の分け | 6d | 2024-02-19 | 2024-02-26 | 100% |  | done |
| 30 | 1.2.6.3 | チケット883 タップ時SE再生 | 6d | 2024-02-19 | 2024-02-26 | 100% |  | done |
| 31 | 1.3 | **制作** | 18d | 2024-01-31 | 2024-02-23 | 100% | 染野、柴田 | done |
| 32 | 1.3.1 | **UI** | 18d | 2024-01-31 | 2024-02-23 | 100% | 染野 | done |
| 33 | 1.3.1.1 | UI社内設計 | 2d | 2024-01-31 | 2024-02-01 | 100% | 染野 | done |
| 34 | 1.3.1.2 | UI社内合意 | 2d | 2024-02-01 | 2024-02-02 | 100% | 染野 | done |
| 35 | 1.3.1.3 | UIEA調整 | 1d | 2024-02-07 | 2024-02-07 | 100% | 染野 | done |
| 36 | 1.3.1.4 | UI指示書作成 | 5d | 2024-02-05 | 2024-02-09 | 100% | 染野 | done |
| 37 | 1.3.1.5 | UI prefab作成（納品完了まで） | 5d | 2024-02-05 | 2024-02-09 | 100% | 染野 | done |
| 38 | 1.3.1.6 | テスト観点レビュー | 1d | 2024-02-14 | 2024-02-14 | 100% | 染野 | done |
| 39 | 1.3.1.7 | テストケースレビュー | 2d | 2024-02-15 | 2024-02-16 | 100% | 染野 | done |
| 40 | 1.3.1.8 | 機能検品 | 1d | 2024-02-16 | 2024-02-16 | 100% | 染野 | done |
| 41 | 1.3.1.9 | dev-lockまでのバグ、修正対応 | 5d | 2024-02-19 | 2024-02-23 | 100% | 染野 | done |
| 42 | 1.3.2 | **演出** | 16d | 2024-02-02 | 2024-02-23 | 100% | 柴田 | done |
| 43 | 1.3.2.1 | 演出社内設計 | 1d | 2024-02-02 | 2024-02-02 | 100% | 柴田 | done |
| 44 | 1.3.2.2 | 演出社内合意 | 2d | 2024-02-05 | 2024-02-06 | 100% | 柴田 | done |
| 45 | 1.3.2.3 | 演出EA調整、確認 | 3d | 2024-02-07 | 2024-02-09 | 100% | 柴田 | done |
| 46 | 1.3.2.4 | 演出指示書（草案組み換え用）作成 | 4d | 2024-02-06 | 2024-02-09 | 100% | 柴田 | done |
| 47 | 1.3.2.5 | 演出素材作成（納品完了まで） | 9d | 2024-02-06 | 2024-02-16 | 100% | 柴田 | done |
| 48 | 1.3.2.6 | 演出指示書（本番用）更新 | 2d | 2024-02-15 | 2024-02-16 | 100% | 柴田 | done |
| 49 | 1.3.2.7 | テスト観点レビュー | 1d | 2024-02-14 | 2024-02-14 | 100% | 柴田 | done |
| 50 | 1.3.2.8 | テストケースレビュー | 1d | 2024-02-16 | 2024-02-16 | 100% | 柴田 | done |
| 51 | 1.3.2.9 | 機能検品 | 1d | 2024-02-16 | 2024-02-16 | 100% | 柴田 | done |
| 52 | 1.3.2.10 | 本番演出検品 | 2d | 2024-02-22 | 2024-02-23 | 100% |  | done |
| 53 | 1.3.2.11 | dev-lockまでのバグ、修正対応 | 5d | 2024-02-19 | 2024-02-23 | 100% | 柴田 | done |

| ID | WBS | Task | Type | Duration | Start | Finish | Complete | inPeople | Status |
| --- | --- | --- | --- | --- | --- | --- | --- | --- | --- |
| 54 | 1.4 | **テストチーム** |  | 19d | 2024-01-31 | 2024-02-26 | 100% | 池内 | done |
| 55 | 1.4.1 | テスト観点作成 |  | 8d | 2024-01-31 | 2024-02-09 | 100% | 池内 | done |
| 56 | 1.4.2 | テスト観点レビュー依頼 |  | 3d | 2024-02-09 | 2024-02-13 | 100% | 池内 | done |
| 57 | 1.4.3 | テスト観点レビュー対応 |  | 2d | 2024-02-14 | 2024-02-15 | 100% | 池内 | done |
| 58 | 1.4.4 | テストケース作成 |  | 2d | 2024-02-14 | 2024-02-15 | 100% | 池内 | done |
| 59 | 1.4.5 | テストケースレビュー依頼 |  | 1d | 2024-02-15 | 2024-02-15 | 100% | 池内 | done |
| 60 | 1.4.6 | テストケースレビュー対応 |  | 1d | 2024-02-19 | 2024-02-19 | 100% | 池内 | done |
| 61 | 1.4.7 | テスト |  | 4d | 2024-02-19 | 2024-02-22 | 100% | 池内 | done |
| 62 | 1.4.8 | dev-lockまでのバグ、修正確認 |  | 5d | 2024-02-20 | 2024-02-26 | 100% | 池内 | done |
| 63 | 1.5 | **ほか工程** |  | 1d | 2024-02-26 | 2024-02-26 | 100% |  | done |
| 64 | 1.5.1 | dev-lockバイナリ提出 |  | 1d | 2024-02-26 | 2024-02-26 | 100% | 運用チーム | done |
| 65 | 2 | **Soft Lock(バイナリ用アセット〆)** | fixed end | 5d | 2024-02-26 | 2024-03-01 | 73% | 李 |  |
| 66 | 2.1 | **企画** |  | 3d | 2024-02-28 | 2024-03-01 | 29% | 李 |  |
| 67 | 2.1.1 | 演出の機能検品 |  | 2d | 2024-02-28 | 2024-02-29 | 100% | 李 | done |
| 68 | 2.1.2 | Tips検品 |  | 2d | 2024-02-28 | 2024-02-29 |  | 李 |  |
| 69 | 2.1.3 | 機能修正確認 |  | 3d | 2024-02-28 | 2024-03-01 |  | 李 |  |
| 70 | 2.2 | **開発** |  | 4d | 2024-02-26 | 2024-02-29 | 100% | 宮本 |  |
| 71 | 2.2.1 | **ソフトロックまでバグ対応** |  | 4d | 2024-02-26 | 2024-02-29 | 100% | 宮本 |  |
| 72 | 2.2.1.1 | チケット879 演出中他機能遷移 |  | 4d | 2024-02-26 | 2024-02-29 | 100% |  | done |
| 73 | 2.2.1.2 | チケット881 デッキ表示の分け |  | 4d | 2024-02-26 | 2024-02-29 | 100% |  | done |
| 74 | 2.2.1.3 | チケット883 タップ時SE再生 |  | 4d | 2024-02-26 | 2024-02-29 | 100% |  | done |
| 75 | 2.2.1.4 | チケット972 チーム総合力表示のボタンを押下した際の白く反転する演出がない |  | 3d | 2024-02-26 | 2024-02-28 | 100% |  | done |
| 76 | 2.2.1.5 | チケット981 総合力表示枠の数字が更新されない場合がある |  | 3d | 2024-02-26 | 2024-02-28 | 100% |  | done |
| 77 | 2.3 | **制作** |  | 4d | 2024-02-26 | 2024-02-29 | 33% | 小俣 |  |
| 78 | 2.3.1 | Tips制作納品 |  | 4d | 2024-02-26 | 2024-02-29 |  | 小俣、鴨志田 |  |
| 79 | 2.3.2 | 本番演出データ納品 |  | 2d | 2024-02-27 | 2024-02-28 | 100% | 小俣、鴨志田 | done |

| ID | WBS | Task | Type | Duration | Start | Finish | Complete | inPeople | Status |
| --- | --- | --- | --- | --- | --- | --- | --- | --- | --- |
| 80 | 2.4 | **テストチーム** |  | 5d | 2024-02-26 | 2024-03-01 | 83% | 池内 |  |
| 81 | 2.4.1 | 演出テスト |  | 2d | 2024-02-29 | 2024-03-01 | 100% | 池内 | done |
| 82 | 2.4.2 | Tipsテスト |  | 2d | 2024-02-29 | 2024-03-01 |  | 池内 |  |
| 83 | 2.4.3 | **バグチケ対応済み確認** |  | 4d | 2024-02-26 | 2024-02-29 | 100% |  |  |
| 84 | 2.4.3.1 | チケット881 デッキ表示の分け |  | 4d | 2024-02-26 | 2024-02-29 | 100% |  | done |
| 85 | 2.4.3.2 | チケット981 総合力表示枠の数字が更新されない場合がある |  | 4d | 2024-02-26 | 2024-02-29 | 100% |  | done |
| 86 | 2.5 | **ほか工程** |  | 1d | 2024-03-01 | 2024-03-01 |  |  |  |
| 87 | 2.5.1 | ソフトロックバイナリ提出 |  | 1d | 2024-03-01 | 2024-03-01 |  | 運用チーム |  |
| 88 | 3 | **Hard Lock** | fixed end | 5d | 2024-03-04 | 2024-03-08 | 27% | 李 | waiting |
| 89 | 3.1 | **企画** |  | 4d | 2024-03-04 | 2024-03-07 | 86% | 李 | waiting |
| 90 | 3.1.1 | 機能接続確認 |  | 2d | 2024-03-04 | 2024-03-05 | 100% | 李 | done |
| 91 | 3.1.2 | バグ修正確認 |  | 4d | 2024-03-04 | 2024-03-07 | 100% | 李 | done |
| 92 | 3.1.3 | Tips検品 |  | 1d | 2024-03-04 | 2024-03-04 | 100% |  | done |
| 93 | 3.2 | **開発** |  | 4d | 2024-03-04 | 2024-03-07 |  | 宮本 | waiting |
| 94 | 3.2.1 | 残りバグ対応 |  | 4d | 2024-03-04 | 2024-03-07 |  | 宮本 | waiting |
| 95 | 3.3 | **制作** |  | 4d | 2024-03-04 | 2024-03-07 |  | 小俣、鴨志田 | waiting |
| 96 | 3.3.1 | 制作関連バグ対応 |  | 4d | 2024-03-04 | 2024-03-07 |  | 小俣、鴨志田 | waiting |
| 97 | 3.3.2 | Tips制作 |  | 1d | 2024-03-04 | 2024-03-04 |  |  | waiting |
| 98 | 3.4 | **テストチーム** |  | 5d | 2024-03-04 | 2024-03-08 |  | 池内 | waiting |
| 99 | 3.4.1 | バグ修正確認 |  | 5d | 2024-03-04 | 2024-03-08 |  | 池内 | waiting |
| 100 | 3.5 | **ほか工程** |  | 1d | 2024-03-08 | 2024-03-08 |  |  | waiting |
| 101 | 3.5.1 | ハードロックバイナリ提出 |  | 1d | 2024-03-08 | 2024-03-08 |  | 運用チーム | waiting |
